# Diseño del software CBB Aldo Teoba

How a schedule from MS Project changed from version to version. A marks actual dates.

## Version 1 (saved 2019-04-01, file Diseño del software CBB Aldo Teoba.mpp)

Note of the change: Final de trabajo

| ID | WBS | Task | Duration | Start | Finish | Predecessors | Total float |
| --- | --- | --- | --- | --- | --- | --- | --- |
| 1 | 1 | **Diseño del software CBBB** | 16d | 2019-03-21 | 2019-04-16 |  | 0d |
| 2 | 1.1 | **Fase 1 Ingenieria de requerimientos** | 16d | 2019-03-21 | 2019-04-16 |  | 0d |
| 3 | 1.1.1 | **Obtención de requerimientos** | 7d | 2019-03-21 | 2019-04-02 |  | 0d |
| 4 | 1.1.1.1 | **Elaborar encuesta dirigida a estudiantes de la FEI** | 2d | 2019-03-21 | 2019-03-25 |  | 0d |
| 5 |  | Lista de preguntas | 2d | 2019-03-21 | 2019-03-25 |  | 0d |
| 6 | 1.1.1.2 | **Aplicación de encuesta a estudiantes de la FEI** | 2d | 2019-03-25 | 2019-03-27 |  | 0d |
| 7 |  | 15 resultados de encuestas | 1d | 2019-03-25 | 2019-03-26 | 5 | 0d |
| 8 |  | Graficas o estadisticas de resultados | 1d | 2019-03-26 | 2019-03-27 | 7 | 0d |
| 9 | 1.1.1.3 | **Generar un listado de restricciones y atributos de calidad según los resultados de las encuestas** | 1d | 2019-03-27 | 2019-03-28 |  | 0d |
| 10 |  | Lista inicial de atributos de calidad y restricciones | 1d | 2019-03-27 | 2019-03-28 | 8 | 0d |
| 11 | 1.1.1.4 | **Realizar un listado de stakeholders basándose en los resultados de las encuestas** | 1d | 2019-03-29 | 2019-04-01 | 9 | 0d |
| 12 |  | Lista de Stakeholders (Expertos del negocio) | 1d | 2019-03-29 | 2019-04-01 |  | 0d |
| 13 | 1.1.1.5 | **Escribir documento de visión y alcance (SI)** | 1d | 2019-04-01 | 2019-04-02 | 11 | 0d |
| 14 |  | Documento de visión y alcance (SI) | 1d | 2019-04-01 | 2019-04-02 |  | 0d |
| 15 | 1.1.2 | **Análisis de requerimientos** | 9d | 2019-04-02 | 2019-04-16 | 3 | 0d |
| 16 | 1.1.2.1 | **Crear una interfaz de usuario para un primer vistazo de la aplicación** | 2d | 2019-04-02 | 2019-04-04 |  | 0d |
| 17 |  | Prototipo de la aplicación (Sketch) | 2d | 2019-04-02 | 2019-04-04 |  | 0d |
| 18 | 1.1.2.2 | **Escribir un diagrama de contexto** | 1d | 2019-04-04 | 2019-04-05 | 16 | 0d |
| 19 |  | Diagrama de contexto | 1d | 2019-04-04 | 2019-04-05 |  | 0d |
| 20 | 1.1.2.3 | **Modelar los requerimientos obtenidos** | 2d | 2019-04-05 | 2019-04-09 | 18 | 0d |
| 21 |  | Modelo de casos de uso | 2d | 2019-04-05 | 2019-04-09 |  | 0d |
| 22 | 1.1.2.4 | **Crear un glosario del funcionamiento del negocio** | 1d | 2019-04-10 | 2019-04-11 | 20 | 0d |
| 23 |  | Modelo de Dominio | 1d | 2019-04-10 | 2019-04-11 |  | 0d |
| 24 | 1.1.2.5 | **Realizar un análisis de factibilidad** | 2d | 2019-04-11 | 2019-04-15 | 22 | 0d |
| 25 |  | Documento de análisis de factibilidad | 2d | 2019-04-11 | 2019-04-15 |  | 0d |
| 26 | 1.1.2.6 | **Priorizar los requerimientos** | 1d | 2019-04-15 | 2019-04-16 | 24 | 0d |
| 27 |  | Lista de requerimientos priorizados | 1d | 2019-04-15 | 2019-04-16 |  | 0d |

## Version 2 (saved 2019-04-02, file Plan de Proyecto.mpp)

Note of the change: Final de trabajo

Last finish 2019-04-16 → 2019-04-29 (+13d). Complete tasks 0 → 1.

Changed:

| ID | Task | Start | Finish | Duration | Complete | Total float | Other |
| --- | --- | --- | --- | --- | --- | --- | --- |
| 1 | **Diseño del software CBBB** | 2019-03-21 A | 2019-04-16 → 2019-04-29 (+13d) | 16d → 24d | 0% → 13% |  | baseline start none → 2019-03-21; baseline finish none → 2019-04-16 |
| 2 | **Fase 1 Ingenieria de requerimientos** | 2019-03-21 A | 2019-04-16 → 2019-04-29 (+13d) | 16d → 24d | 0% → 13% |  | baseline start none → 2019-03-21; baseline finish none → 2019-04-16 |
| 3 | **Obtención de requerimientos** | 2019-03-21 A | 2019-04-02 → 2019-04-04 (+2d) | 7d → 9d | 0% → 33% |  | baseline start none → 2019-03-21; baseline finish none → 2019-04-02 |
| 4 | **Elaborar encuesta dirigida a estudiantes de la FEI** | 2019-03-21 A |  |  | 0% → 50% |  | baseline start none → 2019-03-21; baseline finish none → 2019-03-25 |
| 5 | Lista de preguntas | 2019-03-21 A |  |  | 0% → 50% |  | baseline start none → 2019-03-21; baseline finish none → 2019-03-25 |
| 6 | **Aplicación de encuesta a estudiantes de la FEI** |  | 2019-03-27 → 2019-03-28 (+1d) | 2d → 3d |  |  | baseline start none → 2019-03-25; baseline finish none → 2019-03-27 |
| 7 | 15 resultados de encuestas |  | 2019-03-26 → 2019-03-27 (+1d) | 1d → 2d |  |  | baseline start none → 2019-03-25; baseline finish none → 2019-03-26 |
| 8 | Graficas o estadisticas de resultados | 2019-03-26 → 2019-03-27 (+1d) | 2019-03-27 → 2019-03-28 (+1d) |  |  |  | baseline start none → 2019-03-26; baseline finish none → 2019-03-27 |
| 9 | **Generar un listado de restricciones y atributos de calidad según los resultados de las encuestas** | 2019-03-27 → 2019-03-29 (+2d) | 2019-03-28 → 2019-04-01 (+4d) |  |  |  | baseline start none → 2019-03-27; baseline finish none → 2019-03-28 |
| 10 | Lista inicial de atributos de calidad y restricciones | 2019-03-27 → 2019-03-29 (+2d) | 2019-03-28 → 2019-04-01 (+4d) |  |  |  | baseline start none → 2019-03-27; baseline finish none → 2019-03-28 |
| 11 | **Realizar un listado de stakeholders basándose en los resultados de las encuestas** | 2019-03-29 → 2019-04-01 (+3d) | 2019-04-01 → 2019-04-02 (+1d) |  |  |  | baseline start none → 2019-03-29; baseline finish none → 2019-04-01 |
| 12 | Lista de Stakeholders (Expertos del negocio) | 2019-03-29 → 2019-04-01 (+3d) | 2019-04-01 → 2019-04-02 (+1d) |  |  |  | baseline start none → 2019-03-29; baseline finish none → 2019-04-01 |
| 13 | **Escribir documento de visión y alcance (SI)** | 2019-04-01 → 2019-04-02 A (+1d) | 2019-04-02 → 2019-04-04 A (+2d) | 1d → 2d | 0% → 100% | 0d → none | baseline start none → 2019-04-01; baseline finish none → 2019-04-02 |
| 14 | Documento de visión y alcance (SI) | 2019-04-01 → 2019-04-02 A (+1d) | 2019-04-02 → 2019-04-04 A (+2d) | 1d → 2d | 0% → 100% | 0d → none | baseline start none → 2019-04-01; baseline finish none → 2019-04-02 |
| 15 | **Análisis de requerimientos** | 2019-04-02 → 2019-04-04 (+2d) | 2019-04-16 → 2019-04-29 (+13d) | 9d → 15d |  |  | baseline start none → 2019-04-02; baseline finish none → 2019-04-16 |
| 16 | **Crear una interfaz de usuario para un primer vistazo de la aplicación** | 2019-04-02 → 2019-04-04 (+2d) | 2019-04-04 → 2019-04-09 (+5d) | 2d → 3d |  |  | baseline start none → 2019-04-02; baseline finish none → 2019-04-04 |
| 17 | Prototipo de la aplicación (Sketch) | 2019-04-02 → 2019-04-04 (+2d) | 2019-04-04 → 2019-04-09 (+5d) | 2d → 3d |  |  | baseline start none → 2019-04-02; baseline finish none → 2019-04-04 |
| 18 | **Escribir un diagrama de contexto** | 2019-04-04 → 2019-04-10 (+6d) | 2019-04-05 → 2019-04-12 (+7d) | 1d → 2d |  |  | baseline start none → 2019-04-04; baseline finish none → 2019-04-05 |
| 19 | Diagrama de contexto | 2019-04-04 → 2019-04-10 (+6d) | 2019-04-05 → 2019-04-12 (+7d) | 1d → 2d |  |  | baseline start none → 2019-04-04; baseline finish none → 2019-04-05 |
| 20 | **Modelar los requerimientos obtenidos** | 2019-04-05 → 2019-04-12 (+7d) | 2019-04-09 → 2019-04-17 (+8d) | 2d → 3d |  |  | baseline start none → 2019-04-05; baseline finish none → 2019-04-09 |
| 21 | Modelo de casos de uso | 2019-04-05 → 2019-04-12 (+7d) | 2019-04-09 → 2019-04-17 (+8d) | 2d → 3d |  |  | baseline start none → 2019-04-05; baseline finish none → 2019-04-09 |
| 22 | **Crear un glosario del funcionamiento del negocio** | 2019-04-10 → 2019-04-17 (+7d) | 2019-04-11 → 2019-04-19 (+8d) | 1d → 2d |  |  | baseline start none → 2019-04-10; baseline finish none → 2019-04-11 |
| 23 | Modelo de Dominio | 2019-04-10 → 2019-04-17 (+7d) | 2019-04-11 → 2019-04-19 (+8d) | 1d → 2d |  |  | baseline start none → 2019-04-10; baseline finish none → 2019-04-11 |
| 24 | **Realizar un análisis de factibilidad** | 2019-04-11 → 2019-04-22 (+11d) | 2019-04-15 → 2019-04-25 (+10d) | 2d → 3d |  |  | baseline start none → 2019-04-11; baseline finish none → 2019-04-15 |
| 25 | Documento de análisis de factibilidad | 2019-04-11 → 2019-04-22 (+11d) | 2019-04-15 → 2019-04-25 (+10d) | 2d → 3d |  |  | baseline start none → 2019-04-11; baseline finish none → 2019-04-15 |
| 26 | **Priorizar los requerimientos** | 2019-04-15 → 2019-04-25 (+10d) | 2019-04-16 → 2019-04-29 (+13d) | 1d → 2d |  |  | baseline start none → 2019-04-15; baseline finish none → 2019-04-16 |
| 27 | Lista de requerimientos priorizados | 2019-04-15 → 2019-04-25 (+10d) | 2019-04-16 → 2019-04-29 (+13d) | 1d → 2d |  |  | baseline start none → 2019-04-15; baseline finish none → 2019-04-16 |
